# Projeto E-commerce

Schedule from MS Project, 2021-09-28 to 2021-12-09, costs in R$.

## Calendars

- Standard: Mon-Fri 08:00-12:00, 13:00-17:00; Sat-Sun off.

## Schedule

| ID | WBS | Task | Type | Duration | Start | Finish | Predecessors | Baseline start | Baseline duration | Total slack | Free slack | Work | Cost |
| --- | --- | --- | --- | --- | --- | --- | --- | --- | --- | --- | --- | --- | --- |
| 1 | 1 | **Projeto E-commerce** |  | 52.3d? | 2021-09-28 08:00 | 2021-12-09 10:24 |  | 2021-09-28 08:00 | 0d | 0d |  | 139h | 15,549.96 |
| 2 | 1.1 | **Prospecção** |  | 1.26d | 2021-09-28 08:00 | 2021-09-29 10:04 |  |  |  | 41.37d |  | 10.5h | 1,100 |
| 3 | 1.1.1 | **PETEC** |  | 0.7d | 2021-09-28 08:00 | 2021-09-28 14:36 |  |  |  | 41.37d |  | 5.5h | 550 |
| 4 | 1.1.1.1 | Estudar Dominio de Aplicação |  | 0.13d | 2021-09-28 08:00 | 2021-09-28 09:02 |  |  |  | 41.37d | 0d | 1h | 100 |
| 5 | 1.1.1.2 | Reunir-se com Fornecedor de Requisitos |  | 0.13d | 2021-09-28 09:02 | 2021-09-28 10:04 | 4 |  |  | 41.37d | 0d | 1h | 100 |
| 6 | 1.1.1.3 | Redigir PETEC |  | 0.38d | 2021-09-28 10:04 | 2021-09-28 14:07 | 5 |  |  | 41.37d | 0d | 3h | 300 |
| 7 | 1.1.1.4 | Revisar Proposta Técnica |  | 0.06d | 2021-09-28 14:07 | 2021-09-28 14:36 | 6 |  |  | 41.37d | 0d | 0.5h | 50 |
| 8 | 1.1.1.5 | Aprovar PTEC | milestone | 0d | 2021-09-28 14:36 | 2021-09-28 14:36 | 7 |  |  | 41.37d | 0d |  |  |
| 9 | 1.1.2 | **Est. Prel. Tam.** |  | 0.12d | 2021-09-28 14:36 | 2021-09-28 15:33 |  |  |  | 41.37d |  | 1.5h | 200 |
| 10 | 1.1.2.1 | Estimar Tamanho do Projeto |  | 0.06d | 2021-09-28 14:36 | 2021-09-28 15:04 | 8 |  |  | 41.37d | 0d | 1h | 100 |
| 11 | 1.1.2.2 | Revisar Estimativa de Tamanho do Projeto |  | 0.06d | 2021-09-28 15:04 | 2021-09-28 15:33 | 10 |  |  | 41.37d | 0d | 0.5h | 100 |
| 12 | 1.1.3 | **Est. Prel. Cronograma e Orçamento** |  | 0.44d | 2021-09-28 15:33 | 2021-09-29 10:04 |  |  |  | 41.37d |  | 3.5h | 350 |
| 13 | 1.1.3.1 | Elaborar Cronograma e Orçamento Preliminares |  | 0.25d | 2021-09-28 15:33 | 2021-09-29 08:33 | 11 |  |  | 41.37d | 0d | 2h | 200 |
| 14 | 1.1.3.2 | Revisar Cronograma e Orçamento Preliminares |  | 0.19d | 2021-09-29 08:33 | 2021-09-29 10:04 | 13 |  |  | 41.37d | 0d | 1.5h | 150 |
| 15 | 1.2 | **Análise** |  | 3.67d | 2021-09-29 10:04 | 2021-10-04 16:26 |  |  |  | 0d |  | 27h | 2,699.96 |
| 16 | 1.2.1 | **Documento de Requisitos** |  | 2.92d | 2021-09-29 10:04 | 2021-10-04 09:26 |  |  |  | 0d |  | 21h | 2,099.96 |
| 17 | 1.2.1.1 | Reunir-se com Cliente | manual | 0.25d | 2021-09-29 10:04 | 2021-09-29 13:04 | 14 |  |  |  |  | 2h | 200 |
| 18 | 1.2.1.2 | Elaborar DRE |  | 1.87d | 2021-09-29 13:04 | 2021-10-01 11:02 | 17 |  |  | 41.37d | 0d | 15h | 1,499.96 |
| 19 | 1.2.1.3 | Revisar DRE | manual | 0.8d | 2021-10-01 11:02 | 2021-10-04 09:26 | 18 |  |  |  |  | 4h | 400 |
| 20 | 1.2.1.4 | Submeter DRE para Aprovação do Cliente | milestone, manual | 0d | 2021-10-04 09:26 | 2021-10-04 09:26 | 19 |  |  |  |  |  |  |
| 21 | 1.2.2 | **MRB** |  | 0.75d | 2021-10-04 09:26 | 2021-10-04 16:26 |  |  |  | 0d |  | 6h | 600 |
| 22 | 1.2.2.1 | Elaborar MRB | manual | 0.56d | 2021-10-04 09:26 | 2021-10-04 14:55 | 20 |  |  |  |  | 4.5h | 450 |
| 23 | 1.2.2.2 | Revisar MRB | manual | 0.19d | 2021-10-04 14:55 | 2021-10-04 16:26 | 22 |  |  |  |  | 1.5h | 150 |
| 24 | 1.3 | **Projeto** |  | 3.25d | 2021-10-04 16:26 | 2021-10-08 09:26 |  |  |  | 0d |  | 8.5h | 850 |
| 25 | 1.3.1 | **Diagrama de Classes** |  | 2.25d | 2021-10-04 16:26 | 2021-10-07 09:26 |  |  |  | 0d |  | 4.5h | 450 |
| 26 | 1.3.1.1 | Elaborar Diagrama de Classe | manual | 0.75d | 2021-10-04 16:26 | 2021-10-05 14:26 | 23 |  |  |  |  | 3h | 300 |
| 27 | 1.3.1.2 | Revisar Diagrama de Classe | manual | 1d | 2021-10-05 14:26 | 2021-10-06 14:26 | 26 |  |  |  |  | 1h | 100 |
| 28 | 1.3.1.3 | Atualizar MRB | manual | 0.5d | 2021-10-06 14:26 | 2021-10-07 09:26 | 27 |  |  |  |  | 0.5h | 50 |

| ID | WBS | Task | Type | Duration | Start | Finish | Predecessors | Total slack | Free slack | Work | Cost |
| --- | --- | --- | --- | --- | --- | --- | --- | --- | --- | --- | --- |
| 29 | 1.3.2 | **Modelo Entidade Relacionamento** |  | 1d | 2021-10-07 09:26 | 2021-10-08 09:26 |  | 0d |  | 4h | 400 |
| 30 | 1.3.2.1 | Elaborar Mer | manual | 0.5d | 2021-10-07 09:26 | 2021-10-07 14:26 | 28 |  |  | 3h | 300 |
| 31 | 1.3.2.2 | Revisar Mer | manual | 0.5d | 2021-10-07 14:26 | 2021-10-08 09:26 | 30 |  |  | 1h | 100 |
| 32 | 1.4 | **Planejamento** |  | 10.93d? | 2021-09-28 08:00 | 2021-10-12 16:26 |  | 41.37d |  | 17h | 1,700 |
| 33 | 1.4.1 | Elaborar Estimativa de Tamanho Definitiva |  | 1.75d | 2021-10-08 09:26 | 2021-10-11 16:26 | 31 | 41.37d | 0d | 14h | 1,400 |
| 34 | 1.4.2 | Elaborar Cronograma Definitivo |  | 1d | 2021-10-11 16:26 | 2021-10-12 16:26 | 33 | 41.37d |  | 3h | 300 |
| 35 | 1.4.3 | Elaborar Orçamento Definitivo |  | 1d? | 2021-09-28 08:00 | 2021-09-28 17:00 |  | 51.3d |  |  |  |
| 36 | 1.5 | **Desenvolvimento** |  | 52.3d | 2021-09-28 08:00 | 2021-12-09 10:24 |  | 0d |  | 61h | 6,000 |
| 37 | 1.5.1 | **Implementar RFC01 - Manter Administrador** |  | 0.25d | 2021-09-28 08:00 | 2021-09-28 10:00 |  | 52.05d |  | 8h | 800 |
| 38 | 1.5.1.1 | Implementar RF01 - Incluir administrador |  | 0.25d | 2021-09-28 08:00 | 2021-09-28 10:00 |  | 52.05d |  | 2h | 200 |
| 39 | 1.5.1.2 | Implementar RF02 - Editar administrador |  | 0.25d | 2021-09-28 08:00 | 2021-09-28 10:00 |  | 52.05d |  | 2h | 200 |
| 40 | 1.5.1.3 | Implementar RF03 - Consultar administrador |  | 0.25d | 2021-09-28 08:00 | 2021-09-28 10:00 |  | 52.05d |  | 2h | 200 |
| 41 | 1.5.1.4 | Implementar RF04 - Remover administrador |  | 0.25d | 2021-09-28 08:00 | 2021-09-28 10:00 |  | 52.05d |  | 2h | 200 |
| 42 | 1.5.2 | **Implementar RFC02 - Manter Usuário** |  | 0.25d | 2021-09-28 08:00 | 2021-09-28 10:00 |  | 52.05d |  | 8h | 800 |
| 43 | 1.5.2.1 | Implementar RF05 - Incluir usuário |  | 0.25d | 2021-09-28 08:00 | 2021-09-28 10:00 |  | 52.05d |  | 2h | 200 |
| 44 | 1.5.2.2 | Implementar RF06 - Editar usuário |  | 0.25d | 2021-09-28 08:00 | 2021-09-28 10:00 |  | 52.05d |  | 2h | 200 |
| 45 | 1.5.2.3 | Implementar RF07 - Consultar usuário |  | 0.25d | 2021-09-28 08:00 | 2021-09-28 10:00 |  | 52.05d |  | 2h | 200 |
| 46 | 1.5.2.4 | Implementar RF08 - Remover usuário |  | 0.25d | 2021-09-28 08:00 | 2021-09-28 10:00 |  | 52.05d |  | 2h | 200 |
| 47 | 1.5.3 | **Implementar RFC03 - Manter Produtos** |  | 0.25d | 2021-09-28 08:00 | 2021-09-28 10:00 |  | 52.05d |  | 8h | 800 |
| 48 | 1.5.3.1 | Implementar RF09 - Incluir produto |  | 0.25d | 2021-09-28 08:00 | 2021-09-28 10:00 |  | 52.05d |  | 2h | 200 |
| 49 | 1.5.3.2 | Implementar RF10 - Editar produto |  | 0.25d | 2021-09-28 08:00 | 2021-09-28 10:00 |  | 52.05d |  | 2h | 200 |
| 50 | 1.5.3.3 | Implementar RF11 - Procurar produto |  | 0.25d | 2021-09-28 08:00 | 2021-09-28 10:00 |  | 52.05d |  | 2h | 200 |
| 51 | 1.5.3.4 | Implementar RF12 - Remover produto |  | 0.25d | 2021-09-28 08:00 | 2021-09-28 10:00 |  | 52.05d |  | 2h | 200 |
| 52 | 1.5.4 | **Implementar RFC04 - Manter Transportadora** |  | 0.25d | 2021-09-28 08:00 | 2021-09-28 10:00 |  | 52.05d |  | 8h | 800 |
| 53 | 1.5.4.1 | Implementar RF13 - Incluir transportadora |  | 0.25d | 2021-09-28 08:00 | 2021-09-28 10:00 |  | 52.05d |  | 2h | 200 |
| 54 | 1.5.4.2 | Implementar RF14 - Editar transportadora |  | 0.25d | 2021-09-28 08:00 | 2021-09-28 10:00 |  | 52.05d |  | 2h | 200 |
| 55 | 1.5.4.3 | Implementar RF15 - Consultar transportadora |  | 0.25d | 2021-09-28 08:00 | 2021-09-28 10:00 |  | 52.05d |  | 2h | 200 |
| 56 | 1.5.4.4 | Implementar RF16 - Remover transportadora |  | 0.25d | 2021-09-28 08:00 | 2021-09-28 10:00 |  | 52.05d |  | 2h | 200 |

| ID | WBS | Task | Type | Duration | Start | Finish | Total slack | Work | Cost |
| --- | --- | --- | --- | --- | --- | --- | --- | --- | --- |
| 57 | 1.5.5 | **Implementar RFC05 - Realizar Compras** |  | 0.25d | 2021-09-28 08:00 | 2021-09-28 10:00 | 52.05d | 8h | 800 |
| 58 | 1.5.5.1 | Implementar RF17 - Fazer compra |  | 0.25d | 2021-09-28 08:00 | 2021-09-28 10:00 | 52.05d | 2h | 200 |
| 59 | 1.5.5.2 | Implementar RF18 - Editar compra |  | 0.25d | 2021-09-28 08:00 | 2021-09-28 10:00 | 52.05d | 2h | 200 |
| 60 | 1.5.5.3 | Implementar RF19 - Consultar compra |  | 0.25d | 2021-09-28 08:00 | 2021-09-28 10:00 | 52.05d | 2h | 200 |
| 61 | 1.5.5.4 | Implementar RF20 - Remover compra |  | 0.25d | 2021-09-28 08:00 | 2021-09-28 10:00 | 52.05d | 2h | 200 |
| 62 | 1.5.6 | Implementar RFC06 - Manter Avaliações |  | 0.3d | 2021-09-28 08:00 | 2021-09-28 10:24 | 52d | 3h | 250 |
| 63 | 1.5.7 | **Implementar RFC07 - Emitir Relatórios** |  | 1.3d | 2021-12-08 08:00 | 2021-12-09 10:24 | 0d | 9h | 1,000 |
| 64 | 1.5.7.1 | Implementar RF21 - Emitir relatório de categorias mais vendidas | manual | 0.3d | 2021-12-08 08:00 | 2021-12-08 10:24 |  | 3h | 250 |
| 65 | 1.5.7.2 | Implementar RF22 - Emitir relatório de produtos mais bem avaliados | manual | 0.3d | 2021-12-09 08:00 | 2021-12-09 10:24 |  | 3h | 250 |
| 66 | 1.5.7.3 | Implementar RF23 - Emitir relatório de categorias mais populares | manual | 0.3d | 2021-12-09 08:00 | 2021-12-09 10:24 |  | 3h | 250 |
| 67 | 1.5.8 | Implementar RNF01 - Criptografar a senha armazenada no banco de dados |  | 0.3d | 2021-09-28 08:00 | 2021-09-28 10:24 | 52d | 3h | 250 |
| 68 | 1.5.9 | Implementar RNF02 - Limitar o número de tentativas de login malsucedidas em 5 |  | 0.3d | 2021-09-28 08:00 | 2021-09-28 10:24 | 52d | 3h | 250 |
| 69 | 1.5.10 | Implementar RNF03 - Toda operação deve ser retornada em até 10 segundos |  | 0.3d | 2021-09-28 08:00 | 2021-09-28 10:24 | 52d | 3h | 250 |
| 70 | 1.6 | **Monitoramento e Controle** |  | 0.75d | 2021-09-28 08:00 | 2021-09-28 15:00 | 51.55d | 6h | 600 |
| 71 | 1.6.1 | Acompanhar Projeto |  | 0.75d | 2021-09-28 08:00 | 2021-09-28 15:00 | 51.55d | 6h | 600 |
| 72 | 1.7 | **Gerrencia de Configuração** |  | 0d | 2021-09-28 08:00 | 2021-09-28 08:00 | 52.3d |  |  |
| 73 | 1.7.1 | Elaborar Branch | milestone | 0d | 2021-09-28 08:00 | 2021-09-28 08:00 | 52.3d |  |  |
| 74 | 1.7.2 | Elaborar Merge da Branch X para a Trunk | milestone | 0d | 2021-09-28 08:00 | 2021-09-28 08:00 | 52.3d |  |  |
| 75 | 1.8 | **Fechamento** |  | 1d? | 2021-09-28 08:00 | 2021-09-28 17:00 | 51.3d |  | 1,700 |
| 76 | 1.8.1 | Elaborar Relatório de Lições Aprendidas |  | 1d? | 2021-09-28 08:00 | 2021-09-28 17:00 | 51.3d |  |  |
| 77 | 1.8.2 | Atualizar Base de Dados Histórica |  | 1d? | 2021-09-28 08:00 | 2021-09-28 17:00 | 51.3d |  |  |
| 78 | 1.9 | Controle de Mudança |  | 2.13d | 2021-09-28 08:00 | 2021-09-30 09:02 | 50.17d | 9h | 900 |
